# Initial project plan

Schedule from MS Project, 2019-01-22 to 2019-05-01.

## Calendars

- Standard: Mon-Fri 08:00-12:00, 13:00-17:00; Sat-Sun off.

## Resources

| Resource |
| --- |
| Shafaqat Ali |
| Iram Usmani |
| Jawad Paracha |
| Waseem Khan |
| Naufar Team |
| TESS Procurement |
| QA Team |
| Sajid Shah |
| Arif Khan |
| Justine Mira |
| TESS & Naufar |
| Sf |
| TESS Team |

## Schedule

| ID | WBS | Task | Type | Duration | Start | Finish | Predecessors | Total slack | Resources | Work |
| --- | --- | --- | --- | --- | --- | --- | --- | --- | --- | --- |
| 1 | 1 | **TimeNex Implementation** |  | 72d | 2019-01-22 | 2019-05-01 |  | 0d |  | 2160h |
| 2 | 1.1 | **Initiation & Planning** |  | 8d | 2019-01-22 | 2019-01-31 |  | 0d |  | 528h |
| 3 | 1.1.1 | Kickoff meeting & team introduction | manual | 1d | 2019-01-22 | 2019-01-22 |  |  | Shafaqat Ali; Iram Usmani | 16h |
| 4 | 1.1.2 | Team Interviews | manual | 1d | 2019-01-22 | 2019-01-22 |  |  | Shafaqat Ali | 8h |
| 5 | 1.1.3 | Identification of focal person for each department | manual | 1d | 2019-01-22 | 2019-01-22 |  |  | Shafaqat Ali | 8h |
| 6 | 1.1.4 | Requirement gathering schedule finalization | manual | 1d | 2019-01-22 | 2019-01-22 |  |  | Shafaqat Ali | 8h |
| 7 | 1.1.5 | **Requirement analysis for basic modules (Except SAP Integration & Duty Rosters)** |  | 4d | 2019-01-23 | 2019-01-27 | 6 |  |  | 384h |
| 8 | 1.1.5.1 | Current practice & legacy data | manual | 4d | 2019-01-23 | 2019-01-27 |  |  | Shafaqat Ali; Waseem Khan | 64h |
| 9 | 1.1.5.2 | HR policy | manual | 4d | 2019-01-23 | 2019-01-27 |  |  | Shafaqat Ali; Waseem Khan | 64h |
| 10 | 1.1.5.3 | Departments & scheduling basics | manual | 4d | 2019-01-23 | 2019-01-27 |  |  | Shafaqat Ali; Waseem Khan | 64h |
| 11 | 1.1.5.4 | Leave policy | manual | 4d | 2019-01-23 | 2019-01-27 |  |  | Shafaqat Ali; Waseem Khan | 64h |
| 12 | 1.1.5.5 | Reports requirements | manual | 4d | 2019-01-23 | 2019-01-27 |  |  | Shafaqat Ali; Waseem Khan | 64h |
| 13 | 1.1.5.6 | Dashboard prototyping | manual | 4d | 2019-01-23 | 2019-01-27 |  |  | Shafaqat Ali; Waseem Khan | 64h |
| 14 | 1.1.6 | Identify potential risks, delays and the counter strategy | manual | 1d | 2019-01-28 | 2019-01-28 | 7 |  | Shafaqat Ali | 8h |
| 15 | 1.1.7 | **Submission of Inception report** |  | 3d | 2019-01-29 | 2019-01-31 |  | 0d |  | 96h |
| 16 | 1.1.7.1 | Architecture & System requirements | manual | 3d | 2019-01-29 | 2019-01-31 |  |  | Waseem Khan | 24h |
| 17 | 1.1.7.2 | Features set | manual | 3d | 2019-01-29 | 2019-01-31 |  |  | Shafaqat Ali | 24h |
| 18 | 1.1.7.3 | Identified customization scope | manual | 3d | 2019-01-29 | 2019-01-31 |  |  | Sajid Shah | 24h |
| 19 | 1.1.7.4 | Final project plan (Minor modifications expected) | manual | 3d | 2019-01-29 | 2019-01-31 |  |  | Arif Khan | 24h |
| 20 | 1.2 | **2nd Phase (Basic System Development & Duty roster design)** |  | 14d | 2019-02-03 | 2019-02-21 |  | 0d |  | 512h |
| 21 | 1.2.1 | **Basic System Development** |  | 14d | 2019-02-03 | 2019-02-21 |  | 0d |  | 208h |
| 22 | 1.2.1.1 | Test bed preparation | manual | 1d | 2019-02-03 | 2019-02-03 |  |  | Naufar Team | 8h |
| 23 | 1.2.1.2 | Procurment of hardware | manual | 1d | 2019-02-03 | 2019-02-03 |  |  | TESS Procurement | 8h |
| 24 | 1.2.1.3 | Preparation of QA plan | manual | 5d | 2019-02-03 | 2019-02-07 |  |  | Sajid Shah | 40h |
| 25 | 1.2.1.4 | Collection of HR data in prescribed format | manual | 2d | 2019-02-03 | 2019-02-04 |  |  | Shafaqat Ali | 16h |
| 26 | 1.2.1.5 | Deployment of hardware | manual | 1d | 2019-02-13 | 2019-02-13 | 23 |  | Waseem Khan | 8h |
| 27 | 1.2.1.6 | Customization & Unit testing | manual | 10d | 2019-02-03 | 2019-02-14 |  |  | Waseem Khan | 80h |
| 28 | 1.2.1.7 | Deployment of software | manual | 1d | 2019-02-17 | 2019-02-17 |  |  | Waseem Khan | 8h |
| 29 | 1.2.1.8 | User registration (select group) | manual | 1d | 2019-02-18 | 2019-02-18 |  |  | Justine Mira | 8h |
| 30 | 1.2.1.9 | Quality Assurance & UAT | manual | 4d | 2019-02-18 | 2019-02-21 |  |  | TESS & Naufar | 32h |

| ID | WBS | Task | Type | Duration | Start | Finish | Total slack | Resources | Work |
| --- | --- | --- | --- | --- | --- | --- | --- | --- | --- |
| 31 | 1.2.2 | **Duty Roster & SAP Integration design** |  | 9d | 2019-02-11 | 2019-02-21 | 0d |  | 304h |
| 32 | 1.2.2.1 | Requirement & Gap analysis for duty roster | manual | 4d | 2019-02-11 | 2019-02-14 |  | Shafaqat Ali; Waseem Khan | 64h |
| 33 | 1.2.2.2 | Prototyping | manual | 3d | 2019-02-17 | 2019-02-19 |  | Waseem Khan | 24h |
| 34 | 1.2.2.3 | SAP integration analysis | manual | 4d | 2019-02-11 | 2019-02-14 |  | Arif Khan; Waseem Khan | 64h |
| 35 | 1.2.2.4 | API planning | manual | 5d | 2019-02-17 | 2019-02-21 |  | Arif Khan; Waseem Khan | 80h |
| 36 | 1.2.2.5 | Duty roster and integration guide | manual | 9d | 2019-02-11 | 2019-02-21 |  | Shafaqat Ali | 72h |
| 37 | 1.3 | **Duty Roster & SAP Integration Phase** |  | 19d | 2019-02-24 | 2019-03-21 | 0d |  | 544h |
| 38 | 1.3.1 | QA plan preparation (Duty Roster & SAP Integration) | manual | 5d | 2019-02-24 | 2019-02-28 |  | Sajid Shah | 40h |
| 39 | 1.3.2 | Customization of duty roster | manual | 15d | 2019-02-24 | 2019-03-14 |  | Waseem Khan | 120h |
| 40 | 1.3.3 | Unit testing of duty roster | manual | 14d | 2019-02-27 | 2019-03-18 |  | Waseem Khan | 112h |
| 41 | 1.3.4 | Development of SAP integration layers (APIs) | manual | 15d | 2019-02-24 | 2019-03-14 |  | Waseem Khan | 120h |
| 42 | 1.3.5 | Unit testing of APIs | manual | 14d | 2019-02-27 | 2019-03-18 |  | Waseem Khan | 112h |
| 43 | 1.3.6 | Quality Assurance & UAT (APIs & Duty Roster) | manual | 5d | 2019-03-17 | 2019-03-21 |  | Sajid Shah | 40h |
| 44 | 1.4 | **Final Deployment & Training (Go Live)** |  | 14d | 2019-03-14 | 2019-04-02 | 0d |  | 224h |
| 45 | 1.4.1 | Finalize Hardware Installation and Configuration (Solution Deployment) | manual | 2d | 2019-03-20 | 2019-03-21 |  | TESS & Naufar | 16h |
| 46 | 1.4.2 | Employee registration | manual | 5d | 2019-03-20 | 2019-03-26 |  | Justine Mira | 40h |
| 47 | 1.4.3 | Duty roster posting | manual | 2d | 2019-03-26 | 2019-03-27 |  | Naufar Team | 16h |
| 48 | 1.4.4 | Training Manual / Technical Manual preparation | manual | 8d | 2019-03-14 | 2019-03-25 |  | TESS Team | 64h |
| 49 | 1.4.5 | System Integration Testing | manual | 2d | 2019-03-27 | 2019-03-28 |  | Waseem Khan | 16h |
| 50 | 1.4.6 | Training of staff and data verification. | manual | 7d | 2019-03-24 | 2019-04-01 |  | Waseem Khan | 56h |
| 51 | 1.4.7 | Development signoff | manual | 1d | 2019-04-02 | 2019-04-02 |  | Shafaqat Ali; Iram Usmani | 16h |
| 52 | 1.5 | **Support (One Month)** |  | 22d | 2019-04-02 | 2019-05-01 | 0d |  | 352h |
| 53 | 1.5.1 | Support services | manual | 22d | 2019-04-02 | 2019-05-01 |  | Shafaqat Ali; Waseem Khan | 352h |
